# Лаба3_old

Schedule from MS Project, 2016-09-07 to 2018-08-21, status date 2018-08-21, costs in ₽, A marks actual dates.

## Calendars

- Стандартный: Mon-Fri 09:00-13:00, 14:00-18:00; Sat-Sun off.

## Resources

| Resource | Rate | Cost per use |
| --- | --- | --- |
| Главбух | 562.5 |  |
| Администратор | 437.5 |  |
| Программист | 375 |  |
| Техник | 250 |  |
| Расчетчик1 | 250 |  |
| Расчетчик2 | 250 |  |
| Расчетчик3 | 250 |  |
| Бухгалтер мат. Учета1 | 250 |  |
| Бухгалтер мат. Учета2 | 250 |  |
| Бухгалтер учета ОС и НМА | 250 |  |
| Бухгалтер учета ОС | 250 |  |
| Бухгалтер учета реализации | 250 |  |
| Бухгалтер производственного учета | 250 |  |
| Компьютер | 15000 |  |
| Сервер | 50000 |  |
| Принтер | 5000 |  |
| МФУ | 7000 |  |
| Сетевой кабель |  | 15000 |
| Сетевой концентратор | 3000 |  |
| Панель |  | 10000 |
| Разъемы и розетки |  | 15000 |
| Бухгалтерская система |  | 100000 |
| Офисный пакет |  | 70000 |
| ОС рабочей станции |  | 60000 |
| Серверная ОС |  | 30000 |
| DVD-матрица | 10 |  |
| Интернет |  |  |
| Междугородние переговоры |  |  |
| Оплата курсов |  |  |

## Schedule

| ID | WBS | Task | Type | Duration | Start | Finish | Predecessors | Complete | Remaining | Baseline start | Baseline finish | Baseline duration | Total slack | Free slack | Resources | Work | Actual work | Cost | Baseline cost | Actual cost |
| --- | --- | --- | --- | --- | --- | --- | --- | --- | --- | --- | --- | --- | --- | --- | --- | --- | --- | --- | --- | --- |
| 1 | 1 | Начало проекта | milestone | 0d | 2016-09-07 | 2016-09-07 |  |  |  | 2016-09-07 | 2016-09-07 | 0d | 194.5d | 0d |  |  |  |  |  |  |
| 2 | 2 | **Выбор системы** |  | 246.25d | 2016-09-07 A | 2017-08-17 |  | 99% | 0d | 2016-09-07 | 2017-06-29 | 211.5d | 35.8d |  |  | 2082h | 2082h | 927,875 | 806,250 | 924,875 |
| 3 | 2.1 | Изучение рынка бухгалтерских систем |  | 187.5d | 2016-09-07 A | 2017-06-06 A | 1 | 100% |  | 2016-09-07 | 2017-05-26 | 187.5d |  |  | Администратор; Интернет [0.1%] | 1500h | 1500h | 656,250 | 656,250 | 656,250 |
| 4 | 2.2 | Составление требований к бухгалтерским системам |  | 76.75d | 2016-09-07 A | 2017-07-25 A | 1 | 100% |  | 2016-09-07 | 2017-06-06 | 42d |  |  | Администратор; Главбух [20%] | 390h | 390h | 177,625 | 56,000 | 177,625 |
| 5 | 2.3 | Консультации с фирмами-разработчиками |  | 10d | 2017-07-25 A | 2017-08-08 A | 3, 4 | 100% |  | 2017-06-06 | 2017-06-20 | 10d |  |  | Администратор; Междугородние переговоры [0.1%]; Интернет [0.1%] | 80h | 80h | 38,000 | 38,000 | 35,000 |
| 6 | 2.4 | Принятие окончательного решения |  | 7d | 2017-08-08 A | 2017-08-17 A | 5 | 100% |  | 2017-06-20 | 2017-06-29 | 7d |  |  | Администратор; Главбух | 112h | 112h | 56,000 | 56,000 | 56,000 |
| 7 | 2.5 | Выбор завершен | milestone | 0d | 2017-08-17 | 2017-08-17 | 6 | 100% |  | 2017-06-29 | 2017-06-29 | 0d | 35.8d | 0d |  |  |  |  |  |  |
| 8 | 3 | **Приобретение программного обеспечения** |  | 20d | 2017-08-17 A | 2017-09-14 |  | 70% | 6d | 2017-06-29 | 2017-07-27 | 20d | 243d |  |  | 16h | 16h | 265,250 | 265,250 | 265,250 |
| 9 | 3.1 | Заключение договоров | milestone | 0d | 2017-08-17 A | 2017-08-17 A | 7 | 100% |  | 2017-06-29 | 2017-06-29 | 0d |  |  | Администратор; Программист; Главбух |  |  |  |  |  |
| 10 | 3.2 | Оплата за ПО |  | 5d | 2017-08-17 A | 2017-08-24 A | 9 | 100% |  | 2017-06-29 | 2017-07-06 | 5d |  |  | Главбух [10%]; Бухгалтерская система; Офисный пакет; ОС рабочей станции; Серверная ОС | 4h | 4h | 262,250 | 262,250 | 262,250 |
| 11 | 3.3 | Оформление ПО на баланс |  | 5d | 2017-08-31 A | 2017-09-07 A | 10FS+5d | 100% |  | 2017-07-13 | 2017-07-20 | 5d |  |  | Бухгалтер учета ОС и НМА [30%] | 12h | 12h | 3,000 | 3,000 | 3,000 |
| 12 | 3.4 | Приобретение ПО завершено |  | 5d | 2017-09-07 A | 2017-09-14 | 11 | 10% | 4.5d | 2017-07-20 | 2017-07-27 | 5d | 243d |  |  |  |  |  |  |  |
| 13 | 4 | **Составление проекта сети** |  | 18d | 2017-08-17 A | 2017-09-12 |  | 60% | 7.2d | 2017-06-29 | 2017-07-25 | 18d | 21d |  |  | 80h | 54.4h | 30,000 | 30,000 | 18,800 |
| 14 | 4.1 | Разработка архитектуры сети |  | 8d | 2017-08-17 A | 2017-09-12 | 7 | 60% | 3.2d | 2017-06-29 | 2017-07-25 | 8d | 21d | 0d | Администратор; Программист; Техник [50%] | 80h | 54.4h | 30,000 | 30,000 | 18,800 |
| 15 | 4.2 | Проработка физического размещения сети | milestone | 0d | 2017-09-12 | 2017-09-12 | 14 |  |  | 2017-07-25 | 2017-07-25 | 0d | 21d | 0d | Администратор; Программист; Техник |  |  |  |  |  |
| 16 | 4.3 | Проект сети завершен | milestone | 0d | 2017-09-12 | 2017-09-12 | 15 |  |  | 2017-07-25 | 2017-07-25 | 0d | 21d | 0d |  |  |  |  |  |  |
| 17 | 5 | **Приобретение компьютеров и сетевого оборудования** |  | 47d | 2017-08-17 A | 2017-10-23 |  | 60% | 18.8d | 2017-06-29 | 2017-09-04 | 47d | 0d |  |  | 144.8h | 92.16h | 357,950 | 357,950 | 341,290 |
| 18 | 5.1 | Сбор информации о поставщиках и предложениях |  | 14d | 2017-08-17 A | 2017-09-06 A | 7 | 100% |  | 2017-06-29 | 2017-07-19 | 14d |  |  | Администратор [50%]; Интернет [0.1%]; Междугородние переговоры [0.1%] | 56h | 56h | 27,000 | 27,000 | 24,500 |
| 19 | 5.2 | Анализ и выбор поставщика |  | 5d | 2017-09-12 A | 2017-09-19 A | 14, 18 | 100% |  | 2017-07-25 | 2017-08-01 | 5d |  |  | Администратор [50%]; Главбух [20%]; Интернет [0.1%] | 28h | 28h | 14,250 | 14,250 | 13,250 |
| 20 | 5.3 | Заключение договоров | milestone | 0d | 2017-09-19 A | 2017-09-19 A | 19 | 100% |  | 2017-08-01 | 2017-08-01 | 0d |  |  | Администратор; Главбух [50%] |  |  |  |  |  |
| 21 | 5.4 | Оплата за оборудование |  | 2d | 2017-09-19 A | 2017-09-21 A | 20 | 100% |  | 2017-08-01 | 2017-08-03 | 2d |  |  | Главбух [30%]; Компьютер [1200%]; Сервер; Принтер [200%]; МФУ [200%]; Сетевой кабель; Сетевой концентратор [200%]; Панель; Разъемы и розетки | 4.8h | 4.8h | 302,700 | 302,700 | 302,700 |
| 22 | 5.5 | Оформление оборудования на баланс |  | 10d | 2017-10-02 A | 2017-10-16 | 21FS+7d | 6% | 9.4d | 2017-08-14 | 2017-08-28 | 10d | 0d |  | Бухгалтер учета ОС [70%] | 56h | 3.36h | 14,000 | 14,000 | 840 |
| 23 | 5.6 | Приобретение оборудования завершено |  | 5d | 2017-10-16 | 2017-10-23 | 22 |  |  | 2017-08-28 | 2017-09-04 | 5d | 0d |  |  |  |  |  |  |  |
| 24 | 6 | **Обучение администратора и программиста** |  | 11d | 2017-09-14 A | 2017-09-29 |  | 70% | 3.3d | 2017-07-27 | 2017-08-11 | 11d | 16d |  |  | 104h | 56h | 88,000 | 88,000 | 23,500 |
| 25 | 6.1 | Курсы администраторов |  | 5d | 2017-09-19 A | 2017-09-26 | 16 | 99% | 0d | 2017-08-01 | 2017-08-08 | 5d | 16d | 0d | Администратор; Оплата курсов [0.1%] | 40h | 40h | 42,500 | 42,500 | 17,500 |
| 26 | 6.2 | Курсы программистов |  | 2d | 2017-09-14 A | 2017-09-18 A | 12 | 100% |  | 2017-07-27 | 2017-07-31 | 2d |  |  | Программист; Оплата курсов [0.1%] | 16h | 16h | 26,000 | 26,000 | 6,000 |
| 27 | 6.3 | Сдача сертификационных экзаменов |  | 3d | 2017-09-26 | 2017-09-29 | 25, 26 |  |  | 2017-08-08 | 2017-08-11 | 3d | 16d | 0d | Администратор; Программист | 48h |  | 19,500 | 19,500 |  |
| 28 | 6.4 | Обучение завершено | milestone | 0d | 2017-09-29 | 2017-09-29 | 27 |  |  | 2017-08-11 | 2017-08-11 | 0d | 16d |  |  |  |  |  |  |  |

| ID | WBS | Task | Type | Duration | Start | Finish | Predecessors | Baseline start | Baseline finish | Baseline duration | Total slack | Free slack | Constraint | Resources | Work | Cost | Baseline cost |
| --- | --- | --- | --- | --- | --- | --- | --- | --- | --- | --- | --- | --- | --- | --- | --- | --- | --- |
| 29 | 7 | **Монтаж локальной сети** |  | 43d | 2017-10-23 | 2017-12-21 |  | 2017-09-04 | 2017-11-02 | 43d | 0d |  |  |  | 344h | 86,000 | 86,000 |
| 30 | 7.1 | Установка компьютеров на рабочих местах |  | 3d | 2017-12-11 | 2017-12-14 | 23, 28 | 2017-10-23 | 2017-10-26 | 3d | 0d |  |  | Техник | 24h | 6,000 | 6,000 |
| 31 | 7.2 | Монтаж кабеля |  | 21d | 2017-10-23 | 2017-11-21 | 23, 28 | 2017-09-04 | 2017-10-03 | 21d | 17d |  |  | Техник | 168h | 42,000 | 42,000 |
| 32 | 7.3 | Монтаж сетевых устройств |  | 14d | 2017-11-21 | 2017-12-11 | 23, 28 | 2017-10-03 | 2017-10-23 | 14d | 3d |  |  | Техник | 112h | 28,000 | 28,000 |
| 33 | 7.4 | Подключения кабеля к компьютерам и сетевым устройствам |  | 5d | 2017-12-14 | 2017-12-21 | 30, 31, 32 | 2017-10-26 | 2017-11-02 | 5d | 0d |  |  | Техник | 40h | 10,000 | 10,000 |
| 34 | 7.5 | Монтаж звершен | milestone | 0d | 2017-12-21 | 2017-12-21 | 33 | 2017-11-02 | 2017-11-02 | 0d | 0d |  |  |  |  |  |  |
| 35 | 8 | **Установка ПО на компьютеры** |  | 27d | 2017-12-21 | 2018-01-29 |  | 2017-11-02 | 2017-12-11 | 27d | 0d |  |  |  | 176h | 74,500 | 74,500 |
| 36 | 8.1 | Установка сервера |  | 5d | 2017-12-21 | 2017-12-28 | 34 | 2017-11-02 | 2017-11-09 | 5d | 0d |  |  | Администратор | 40h | 17,500 | 17,500 |
| 37 | 8.2 | Создание доменов и пользователей |  | 7d | 2017-12-28 | 2018-01-08 | 36 | 2017-11-09 | 2017-11-20 | 7d | 0d |  |  | Администратор | 56h | 24,500 | 24,500 |
| 38 | 8.3 | Проверка и настройка работы сети |  | 5d | 2018-01-08 | 2018-01-15 | 37 | 2017-11-20 | 2017-11-27 | 5d | 0d |  |  | Администратор; Программист | 80h | 32,500 | 32,500 |
| 39 | 8.4 | Настройка сети завершена |  | 10d | 2018-01-15 | 2018-01-29 | 38 | 2017-11-27 | 2017-12-11 | 10d | 0d |  |  |  |  |  |  |
| 40 | 9 | **Ввод начальных данных** |  | 105d | 2018-01-29 | 2018-06-25 |  | 2017-12-11 | 2018-05-07 | 105d | 0d |  |  |  | 2688h | 922,200 | 922,200 |
| 41 | 9.1 | Ввод справочников |  | 40d | 2018-01-29 | 2018-03-26 | 39 | 2017-12-11 | 2018-02-05 | 40d | 0d |  |  | Администратор; Программист; Расчетчик1 [30%]; Расчетчик2 [30%]; Расчетчик3 [30%]; Бухгалтер мат. Учета1 [50%]; Бухгалтер мат. Учета2 [50%]; Бухгалтер учета ОС и НМА [50%]; Бухгалтер учета ОС [50%]; Бухгалтер учета реализации [50%]; Бухгалтер производственного учета [50%]; DVD-матрица [1000%] | 1888h | 572,100 | 572,100 |
| 42 | 9.2 | Ввод начальных остатков |  | 65d | 2018-03-26 | 2018-06-25 | 41 | 2018-02-05 | 2018-05-07 | 65d | 0d |  | start no earlier than 2012-02-01 | Администратор; Программист; Главбух [50%]; DVD-матрица [1000%] | 800h | 350,100 | 350,100 |
| 43 | 9.3 | Ввод начальных данных завершен | milestone | 0d | 2018-06-25 | 2018-06-25 | 42 | 2018-05-07 | 2018-05-07 | 0d | 41d |  |  |  |  |  |  |
| 44 | 10 | **Обучение персонала** |  | 135d | 2018-01-29 | 2018-08-06 |  | 2017-12-11 | 2018-06-18 | 135d | 0d |  |  |  | 2552h | 740,250 | 740,250 |
| 45 | 10.1 | Принципы работы системы |  | 6d | 2018-01-29 | 2018-03-29 | 39 | 2017-12-11 | 2018-02-07 | 5.5d | 37d | 0d |  | Администратор [50%]; Главбух [50%]; Расчетчик1 [50%]; Расчетчик2 [50%]; Расчетчик3 [50%]; Бухгалтер мат. Учета1 [50%]; Бухгалтер мат. Учета2 [50%]; Бухгалтер учета ОС и НМА [50%]; Бухгалтер учета ОС [50%]; Бухгалтер учета реализации [50%]; Бухгалтер производственного учета [50%] | 132h | 39,000 | 39,000 |
| 46 | 10.2 | Изучение интерфейса |  | 5d | 2018-03-29 | 2018-04-05 | 45 | 2018-02-08 | 2018-02-14 | 5d | 37d | 0d |  | Программист [50%]; Главбух [50%]; Расчетчик1 [50%]; Расчетчик2 [50%]; Расчетчик3 [50%]; Бухгалтер мат. Учета1 [50%]; Бухгалтер мат. Учета2 [50%]; Бухгалтер учета ОС и НМА [50%]; Бухгалтер учета ОС [50%]; Бухгалтер учета реализации [50%]; Бухгалтер производственного учета [50%] | 220h | 63,750 | 63,750 |
| 47 | 10.3 | Изучение справочников |  | 20d | 2018-04-05 | 2018-05-03 | 41SS+5d, 46 | 2018-02-15 | 2018-03-14 | 20d | 37d |  |  | Программист [50%]; Главбух [50%]; Расчетчик1 [50%]; Расчетчик2 [50%]; Расчетчик3 [50%]; Бухгалтер мат. Учета1 [50%]; Бухгалтер мат. Учета2 [50%]; Бухгалтер учета ОС и НМА [50%]; Бухгалтер учета ОС [50%]; Бухгалтер учета реализации [50%]; Бухгалтер производственного учета [50%] | 880h | 255,000 | 255,000 |
| 48 | 10.4 | Изучение документов и журналов |  | 30d | 2018-06-25 | 2018-08-06 | 42, 47 | 2018-05-07 | 2018-06-18 | 30d | 0d |  |  | Программист [50%]; Главбух [50%]; Расчетчик1 [50%]; Расчетчик2 [50%]; Расчетчик3 [50%]; Бухгалтер мат. Учета1 [50%]; Бухгалтер мат. Учета2 [50%]; Бухгалтер учета ОС и НМА [50%]; Бухгалтер учета ОС [50%]; Бухгалтер учета реализации [50%]; Бухгалтер производственного учета [50%] | 1320h | 382,500 | 382,500 |
| 49 | 10.5 | Обучение завершено | milestone | 0d | 2018-08-06 | 2018-08-06 | 48 | 2018-06-18 | 2018-06-18 | 0d | 0d |  |  |  |  |  |  |
| 50 | 11 | **Передача в эксплуатацию** |  | 11d | 2018-08-06 | 2018-08-21 |  | 2018-06-18 | 2018-07-03 | 11d | 0d |  |  |  | 156h | 72,250 | 72,250 |
| 51 | 11.1 | Формирование тестовой отчётности |  | 5d | 2018-08-06 | 2018-08-13 | 49 | 2018-06-18 | 2018-06-25 | 5d | 0d |  |  | Администратор; Программист; Главбух | 120h | 55,000 | 55,000 |
| 52 | 11.2 | Акт ввода в эксплуатацию |  | 6d | 2018-08-13 | 2018-08-21 | 51 | 2018-06-25 | 2018-07-03 | 6d | 0d |  |  | Администратор [50%]; Главбух [50%] | 36h | 17,250 | 17,250 |
| 53 | 11.3 | Передача в эксплуатацию завершена | milestone | 0d | 2018-08-21 | 2018-08-21 | 52 | 2018-07-03 | 2018-07-03 | 0d | 0d |  |  |  |  |  |  |
| 54 | 12 | Конец проекта | milestone | 0d | 2018-08-21 | 2018-08-21 | 53 | 2018-07-03 | 2018-07-03 | 0d | 0d |  |  |  |  |  |  |
